# 2019-10 - Known Trips Dataset

Schedule from Primavera P6, 2019-05-01 to 2021-07-02, data date 2019-10-31, A marks actual dates.
Must finish by 2020-12-31

## Calendars

- Standard: Mon-Fri 8:00-12:00, 13:00-17:00; Sat-Sun off.

## Schedule

| ID | WBS | Activity | Type | Duration | Start | Finish | Predecessors | Complete | Remaining | Planned start | Planned finish | Total float | Free float | Constraint | MSP Activity ID | Unique ID - MSP | EVT | CWBS | CA ID | EV % Complete | OBS | WP ID |
| --- | --- | --- | --- | --- | --- | --- | --- | --- | --- | --- | --- | --- | --- | --- | --- | --- | --- | --- | --- | --- | --- | --- |
| A1090 |  | SVT 3 |  | 22d | 2019-05-01 A | 2019-05-30 A |  | 100% |  | 2019-10-31 | 2019-11-29 |  |  |  | 123 | 10 | SVT |  |  |  |  |  |
| A1000 |  | Contract Start | milestone | 0d | 2019-05-01 A | 2019-05-01 A |  | 100% |  |  |  |  |  |  | 94 | 1 | MS |  |  |  |  |  |
| A1020 |  | Milestone A | milestone | 0d | 2019-08-16 A | 2019-08-16 A | A1240, A1350 | 100% |  | 2019-08-26 | 2019-08-26 |  |  | mandatory finish 2019-08-26 | 117 | 3 | MS |  |  |  |  |  |
| A1070 |  | SVT 1 |  | 131d | 2019-10-09 A | 2020-04-30 | A1860 |  | 115d | 2019-10-31 | 2020-04-30 | -108d | 0d |  | 121 | 8 | SVT |  |  |  |  |  |
| A1030 |  | Milestone B | milestone | 0d | 2019-12-02 | 2019-12-02 | A1580, A1150, A1560, A1220 |  |  |  |  | 0d |  | mandatory finish 2019-12-02 | 118 | 4 | MS |  |  |  |  |  |
| A1080 |  | SVT 2 |  | 21d | 2019-12-03 | 2019-12-31 | A1030 |  |  |  |  | 0d |  |  | 122 | 9 | SVT |  |  |  |  |  |
| A1110 |  | SVT 5 |  | 23d | 2020-01-01 | 2020-01-31 | A1310 FF |  |  |  |  | 239d | 370d |  | 125 | 12 | SVT |  |  |  |  |  |
| A1040 |  | Milestone C | milestone | 0d | 2020-03-02 | 2020-03-02 | A1320, A1650, A1460 |  |  |  |  | 0d |  | mandatory finish 2020-03-02 | 119 | 5 | MS |  |  |  |  |  |
| A1100 |  | SVT 4 |  | 22d | 2020-09-01 | 2020-09-30 | A1430, A1330 |  |  |  |  | 49d | 37d |  | 124 | 11 | SVT |  |  |  |  |  |
| A1010 |  | Contract Complete | milestone | 0d | 2020-12-31 | 2020-12-31 | A1690, A1130, A1620, A1820, A1840, A1850, A1570, A1800 |  |  |  |  | 0d |  | mandatory finish 2020-12-31 | 93 | 2 | MS |  |  |  |  |  |
|  | 13 | **x** |  |  | 2019-05-01 | 2021-01-19 |  |  |  |  |  |  |  |  |  |  |  |  |  |  |  |  |
| A1120 |  | x | WBS summary | 349d | 2019-05-01 A | 2021-01-19 |  |  | 218d | 2019-05-01 | 2020-08-31 | -13d | 118d |  | 1 | 13 |  | 1 |  |  |  |  |
| A1130 |  | x |  | 108d | 2020-07-02 | 2021-01-19 | A1080, A1710 |  |  | 2020-01-01 | 2020-05-29 | -13d | 0d |  | 88 | 14 | SLPP | 1 | 1 | 10% |  |  |
|  | 13.2 | **03A101h, 03A101i** |  |  | 2019-05-01 | 2020-11-26 |  |  |  |  |  |  |  |  |  |  |  |  |  |  |  |  |
| A1140 |  | x | WBS summary | 153d | 2019-05-01 A | 2020-11-26 |  |  | 151d | 2019-05-01 | 2019-11-29 | 25d | 156d |  | 5 | 15 |  | 1 | 1A |  | A |  |
| A1160 |  | x |  | 43d | 2019-05-01 A | 2019-06-28 A | A1000 | 100% |  |  |  |  |  |  | 57 | 17 | 50/50 | 1 | 1A | 38% | A | 1A2 |
| A1210 |  | x |  | 152d | 2019-10-29 A | 2020-05-29 | A1000 |  | 150d | 2019-05-01 | 2019-11-28 | -258d | 0d |  | 59 | 22 | 50/50 | 1 | 1A | 50% | A | 1A4 |
| A1150 |  | x |  | 1d | 2020-06-01 | 2020-11-26 | A1210 |  |  | 2020-05-28 | 2020-05-28 | -258d | 0d |  | 56 | 16 | 0/100 | 1 | 1A | 50% | A | 1A1 |
|  | 13.2.3 | **03A101e, 03A101h, 03A101i, 06A101a, 06A208a** |  |  | 2019-05-15 | 2019-08-28 |  |  |  |  |  |  |  |  |  |  |  |  |  |  |  |  |
| A1170 |  | x | WBS summary | 132d | 2019-05-15 A | 2019-08-28 A | A1000 | 100% |  | 2019-05-01 | 2019-10-31 |  |  |  | 58 | 18 | % Complete | 1 | 1A | 100% | A | 1A3 |
| A1180 |  | x |  | 27d | 2019-05-15 A | 2019-06-06 A | A1000 | 100% |  | 2019-05-01 | 2019-06-06 |  |  |  | 95 | 19 | % Complete | 1 | 1A | 100% | A | 1A3 |
| A1190 |  | x |  | 45d | 2019-06-07 A | 2019-07-10 A | A1180 | 100% |  | 2019-06-07 | 2019-08-08 |  |  |  | 97 | 20 | % Complete | 1 | 1A | 100% | A | 1A3 |
| A1200 |  | x |  | 60d | 2019-07-07 A | 2019-08-28 A | A1190 | 100% |  | 2019-08-09 | 2019-10-31 |  |  |  | 96 | 21 | % Complete | 1 | 1A | 100% | A | 1A3 |
|  | 13.2.5 | **03A101e, 03A101h, 03A101i, 06A101a, 06A208a-1** |  |  | 2019-06-24 | 2019-08-05 |  |  |  |  |  |  |  |  |  |  |  |  |  |  |  |  |
| A1220 |  | x | WBS summary | 67d | 2019-06-24 A | 2019-08-05 A | A1000 FS+22d | 100% |  | 2019-06-28 | 2019-09-30 |  |  |  | 60 | 23 | % Complete | 1 | 1A | 100% | A | 1A5 |
| A1230 |  | x |  | 1d | 2019-06-24 A | 2019-06-24 A | A1000 FS+22d | 100% |  | 2019-06-28 | 2019-06-28 |  |  | start on or after 2019-06-28 | 102 | 24 | % Complete | 1 | 1A | 100% | A | 1A5 |
| A1240 |  | x |  | 1d | 2019-06-24 A | 2019-06-24 A | A1230, A1160 FF | 100% |  | 2019-07-31 | 2019-07-31 |  |  | start on or after 2019-07-31 | 103 | 25 | % Complete | 1 | 1A | 100% | A | 1A5 |
| A1250 |  | x |  | 1d | 2019-07-15 A | 2019-07-16 A | A1240, A1380 | 100% |  | 2019-08-30 | 2019-08-30 |  |  |  | 104 | 26 | % Complete | 1 | 1A | 100% | A | 1A5 |
| A1260 |  | x |  | 41d | 2019-08-05 A | 2019-08-05 A | A1250 | 100% |  | 2019-08-05 | 2019-09-30 |  |  | start on or after 2019-09-30 | 105 | 27 | % Complete | 1 | 1A | 100% | A | 1A5 |

| ID | WBS | Activity | Type | Duration | Start | Finish | Predecessors | Complete | Remaining | Planned start | Planned finish | Total float | Free float | Constraint | MSP Activity ID | Unique ID - MSP | CWBS | OBS | CA ID | WP ID | EVT | EV % Complete |
| --- | --- | --- | --- | --- | --- | --- | --- | --- | --- | --- | --- | --- | --- | --- | --- | --- | --- | --- | --- | --- | --- | --- |
|  | 13.3 | **03A101h** |  |  | 2019-12-03 | 2020-08-31 |  |  |  |  |  |  |  |  |  |  |  |  |  |  |  |  |
| A1290 |  | x | WBS summary | 195d | 2019-12-03 | 2020-08-31 |  |  |  |  |  | 88d | 219d |  | 6 | 30 | 1 | B | 1B |  |  |  |
| A1310 |  | x |  | 44d | 2019-12-03 | 2020-01-31 | A1030 |  |  |  |  | 239d | 0d |  | 62 | 32 | 1 |  | 1B | 1B2 | 0/100 | 0% |
| A1330 |  | x |  | 195d | 2019-12-03 | 2020-08-31 | A1030 |  |  |  |  | 49d | 0d |  | 64 | 34 | 1 | B | 1B | 1B4 | PP | 0% |
| A1320 |  | x |  | 43d | 2020-01-01 | 2020-02-28 | A1080 |  |  |  |  | 1d |  |  | 63 | 33 | 1 | B | 1B | 1B3 | 0/100 | 0% |
| A1300 |  | x |  | 65d | 2020-04-01 | 2020-06-30 | A1040 |  |  |  |  | 132d | 263d | start on or after 2020-04-01 | 61 | 31 | 1 | B | 1B | 1B1 |  | 0% |
|  | 13.4 | **x** |  |  | 2019-05-01 | 2019-08-29 |  |  |  |  |  |  |  |  |  |  |  |  |  |  |  |  |
| A1340 |  | x | WBS summary | 283d | 2019-05-01 A | 2019-08-29 A |  | 100% |  | 2019-05-01 | 2020-05-29 |  |  |  | 7 | 35 | 1 | C | 1C |  |  |  |
| A1370 |  | x |  | 66d | 2019-05-01 A | 2019-07-31 A | A1000 | 100% |  |  |  |  |  |  | 67 | 38 | 1 | C | 1C | 1C3 | % Complete | 0% |
| A1360 |  | x |  | 21d | 2019-05-31 A | 2019-05-31 A | A1090 | 100% |  | 2020-05-01 | 2020-05-29 |  |  |  | 66 | 37 | 1 | C | 1C | 1C2 | 0/100 | 0% |
| A1380 |  | x |  | 87d | 2019-06-24 A | 2019-08-29 A | A1000, A1020 FF | 100% |  | 2019-05-01 | 2019-08-29 |  |  |  | 68 | 39 | 1 | C | 1C | 1C4 | % Complete | 100% |
| A1350 |  | x |  | 23d | 2019-07-01 A | 2019-07-01 A | A1000, A1370 SS | 100% |  | 2019-07-01 | 2019-07-31 |  |  | start on or after 2019-07-01 | 65 | 36 | 1 | C | 1C | 1C1 |  | 100% |
|  | 13.5 | **03A101i** |  |  |  |  |  |  |  |  |  |  |  |  |  |  |  |  |  |  |  |  |
|  | 14 | **x-1** |  |  | 2019-05-01 | 2020-08-31 |  |  |  |  |  |  |  |  |  |  |  |  |  |  |  |  |
| A1420 |  | x | WBS summary | 349d | 2019-05-01 A | 2020-08-31 |  |  | 218d |  |  | 88d | 219d |  | 2 | 43 | 2 |  |  |  |  |  |
| A1430 |  | x |  | 174d | 2020-01-01 | 2020-08-31 | A1080 |  |  |  |  | 49d | 0d |  | 89 | 44 | 2 |  | 2 |  | SLPP | 33% |
|  | 14.2 | **03A101h** |  |  | 2019-05-01 | 2020-02-28 |  |  |  |  |  |  |  |  |  |  |  |  |  |  |  |  |
| A1440 |  | x | WBS summary | 153d | 2019-05-01 A | 2020-02-28 |  |  | 87d | 2019-07-31 | 2020-02-28 | 219d | 350d |  | 9 | 45 | 2 | A | 2A |  |  |  |
| A1540 |  | x |  | 43d | 2019-05-01 A | 2019-06-28 A |  | 100% |  | 2019-10-31 | 2019-12-30 |  |  |  | 74 | 55 | 2 | B | 2A | 2A4 | 0/100 | 0% |
| A1450 |  | x |  | 21d | 2019-05-31 A | 2019-06-28 A | A1090 | 100% |  | 2019-12-02 | 2019-12-30 |  |  |  | 71 | 46 | 2 | A | 2A | 2A1 | 0/100 | 0% |
| A1460 |  | x |  | 43d | 2020-01-01 | 2020-02-28 | A1080, A1530, A1470 |  |  |  |  | 1d |  |  | 72 | 47 | 2 | A | 2A | 2A2 | 50/50 | 0% |
|  | 14.2.3 | **03A101h, 06A208a** |  |  | 2019-07-15 | 2019-12-31 |  |  |  |  |  |  |  |  |  |  |  |  |  |  |  |  |
| A1470 |  | x | WBS summary | 110d | 2019-07-15 A | 2019-12-31 | A1000 FS+22d |  | 44d | 2019-07-31 | 2019-12-31 | 262d | 393d |  | 73 | 48 | 2 | A | 2A | 2A3 |  | 50% |
| A1480 |  | x |  | 1d | 2019-07-15 A | 2019-07-15 A | A1000 FS+22d | 100% |  | 2019-07-31 | 2019-07-31 |  |  | start on or after 2019-07-31 | 107 | 49 | 2 | A | 2A | 2A3 |  | 100% |
| A1490 |  | x |  | 1d | 2019-08-30 A | 2019-08-30 A | A1480 FS+5d | 100% |  | 2019-11-08 | 2019-11-08 |  |  | start on or after 2019-08-30 | 108 | 50 | 2 | A | 2A | 2A3 |  | 100% |
| A1500 |  | x |  | 1d | 2019-09-30 A | 2019-09-30 A | A1490 FS+5d | 100% |  | 2019-11-18 | 2019-11-18 |  |  | start on or after 2019-09-30 | 109 | 51 | 2 | A | 2A | 2A3 |  | 100% |
| A1520 |  | x |  | 1d | 2019-11-29 | 2019-11-29 |  |  |  |  |  | 17d | 16d | start on or after 2019-11-29 | 111 | 53 | 2 | A | 2A | 2A3 |  | 0% |
| A1530 |  | x |  | 1d | 2019-12-31 | 2019-12-31 | A1520 FS+5d |  |  |  |  | 1d | 0d | start on or after 2019-12-31 | 112 | 54 | 2 | A | 2A | 2A3 |  | 0% |

| ID | WBS | Activity | Type | Duration | Start | Finish | Predecessors | Complete | Remaining | Planned start | Planned finish | Total float | Free float | Constraint | MSP Activity ID | Unique ID - MSP | CWBS | OBS | CA ID | WP ID | EVT | EV % Complete |
| --- | --- | --- | --- | --- | --- | --- | --- | --- | --- | --- | --- | --- | --- | --- | --- | --- | --- | --- | --- | --- | --- | --- |
|  | 14.3 | **03A101h, 03A101i** |  |  | 2019-05-27 | 2020-06-01 |  |  |  |  |  |  |  |  |  |  |  |  |  |  |  |  |
| A1550 |  | x | WBS summary | 283d | 2019-05-27 A | 2020-06-01 |  |  | 152d | 2019-05-01 | 2020-05-29 | 153d | 284d |  | 10 | 56 | 2 | B | 2B |  |  |  |
| A1560 |  | x |  | 153d | 2019-05-27 A | 2020-06-01 | A1000 |  | 40d | 2019-05-01 | 2019-11-29 | -130d | 0d |  | 76 | 57 | 2 | B | 2B | 2B2 | % Complete | 100% |
| A1570 |  | x |  | 108d | 2020-01-01 | 2020-05-29 | A1080, A1360 FF |  |  |  |  | 154d |  |  | 77 | 58 | 2 | B | 2B | 2B3 | % Complete | 100% |
| A1580 |  | x |  | 21d | 2020-04-30 | 2020-04-30 | A1200, A1070, A1170 |  |  | 2020-04-09 | 2020-05-07 |  |  |  | 78 | 59 | 2 | B | 2B | 2B4 | 0/100 | 100% |
|  | 14.4 | **x** |  |  | 2019-05-01 | 2019-05-01 |  |  |  |  |  |  |  |  |  |  |  |  |  |  |  |  |
| A1590 |  | x |  | 65d | 2019-05-01 A | 2019-05-01 A |  | 100% |  | 2020-01-01 | 2020-03-31 |  |  |  | 11 | 60 | 2 | C | 2C |  |  |  |
|  | 15 | **x-2** |  |  | 2019-05-05 | 2020-06-29 |  |  |  |  |  |  |  |  |  |  |  |  |  |  |  |  |
| A1610 |  | x | WBS summary | 304d | 2019-05-05 A | 2020-06-29 |  |  | 174d | 2019-05-01 | 2020-06-29 | 133d | 264d |  | 3 | 62 | 3 |  |  |  |  |  |
| A1620 |  | x |  | 1d | 2019-10-31 | 2019-10-31 | A1670 |  |  | 2019-11-01 | 2019-11-01 |  |  | start on or after 2019-11-01 | 91 | 63 | 3 |  | 3 |  | SLPP | 100% |
|  | 15.2 | **03A101h, 03A101i** |  |  | 2019-05-05 | 2020-06-29 |  |  |  |  |  |  |  |  |  |  |  |  |  |  |  |  |
| A1630 |  | x | WBS summary | 304d | 2019-05-05 A | 2020-06-29 |  |  | 174d | 2019-05-01 | 2020-06-29 | 133d | 264d |  | 12 | 64 | 3 | C | 3C |  |  |  |
| A1670 |  | x |  | 23d | 2019-05-05 A | 2019-05-31 A | A1000 | 100% |  | 2019-05-01 | 2019-05-31 |  |  |  | 83 | 68 | 3 | C | 3C | 3C4 | % Complete | 100% |
| A1640 |  | x |  | 66d | 2019-10-31 | 2020-01-30 | A1620 SS |  |  | 2019-11-01 | 2020-01-31 | 133d | 0d |  | 80 | 65 |  | C | 3C | 3C1 | 50/50 | 91% |
| A1650 |  | x |  | 64d | 2019-12-03 | 2020-02-28 | A1030 |  |  |  |  | 1d |  |  | 81 | 66 | 3 | C | 3C | 3C2 | 50/50 | 0% |
| A1660 |  | x |  | 107d | 2020-01-31 | 2020-06-29 | A1640, A1620 |  |  | 2020-02-03 | 2020-06-30 | 133d | 264d |  | 82 | 67 | 3 | C | 3C | 3C3 | 50/50 | 0% |
|  | 16 | **x-3** |  |  | 2019-12-03 | 2020-03-31 |  |  |  |  |  |  |  |  |  |  |  |  |  |  |  |  |
| A1680 |  | x | WBS summary | 86d | 2019-12-03 | 2020-03-31 |  |  |  |  |  | 197d | 328d |  | 4 | 69 | 4 |  |  |  |  |  |
| A1690 |  | x |  | 86d | 2019-12-03 | 2020-03-31 | A1030 |  |  |  |  | 197d |  |  | 90 | 70 | 4 |  | 4 |  | SLPP | 0% |
|  | 17 | **x-4** |  |  | 2019-05-01 | 2021-07-02 |  |  |  |  |  |  |  |  |  |  |  |  |  |  |  |  |
| A1700 |  | x | WBS summary | 568d | 2019-05-01 A | 2021-07-02 |  |  | 306d |  |  | -131d | 0d |  | 13 | 71 | 5 | A | 5A |  |  |  |
| A1710 |  | x |  | 175d | 2019-05-01 A | 2020-07-01 | A1000 |  | 44d | 2019-05-01 | 2019-12-31 | -131d | 0d |  | 84 | 72 | 5 | A | 5A | 5A1 | LOE | 88% |
| A1720 |  | x |  | 262d | 2020-07-02 | 2021-07-02 | A1710 |  |  | 2020-01-01 | 2020-12-31 | -131d | 0d |  | 85 | 73 | 5 | A | 5A | 5A2 | LOE | 0% |
|  | 18 | **03A101h** |  |  | 2019-05-01 | 2021-07-02 |  |  |  |  |  |  |  |  |  |  |  |  |  |  |  |  |
| A1730 |  | x | WBS summary | 568d | 2019-05-01 A | 2021-07-02 |  |  | 306d |  |  | -131d | 0d |  | 14 | 74 | 5 | B | 5B |  |  |  |
| A1740 |  | x |  | 175d | 2019-05-01 A | 2020-07-01 | A1000 |  | 44d | 2019-05-01 | 2019-12-31 | -131d | 0d |  | 86 | 75 | 5 | B | 5B | 5B1 | LOE | 70% |
| A1750 |  | x |  | 262d | 2020-07-02 | 2021-07-02 | A1740 |  |  | 2020-01-01 | 2020-12-31 | -131d | 0d |  | 87 | 76 | 5 | C | 5B | 5B2 | LOE | 0% |

| ID | WBS | Activity | Type | Duration | Start | Finish | Predecessors | Complete | Remaining | Planned start | Planned finish | Total float | Free float | Constraint | MSP Activity ID | Unique ID - MSP | CWBS | OBS | CA ID | WP ID | EVT | EV % Complete |
| --- | --- | --- | --- | --- | --- | --- | --- | --- | --- | --- | --- | --- | --- | --- | --- | --- | --- | --- | --- | --- | --- | --- |
|  | 19 | **03A101i** |  |  | 2019-05-01 | 2021-07-02 |  |  |  |  |  |  |  |  |  |  |  |  |  |  |  |  |
| A1760 |  | x | WBS summary | 568d | 2019-05-01 A | 2021-07-02 |  |  | 306d |  |  | -131d | 0d |  | 15 | 77 | 5 | C | 5C |  |  |  |
| A1770 |  | x |  | 175d | 2019-05-01 A | 2020-07-01 | A1000 |  | 44d | 2019-05-01 | 2019-12-31 | -131d | 0d |  | 50 | 78 | 6 | C | 5C | 5C1 | LOE | 88% |
| A1780 |  | x |  | 262d | 2020-07-02 | 2021-07-02 | A1770 |  |  | 2020-01-01 | 2020-12-31 | -131d | 0d |  | 51 | 79 | 5 | C | 5C | 5C2 | LOE | 0% |
|  | 20 | **x-5** |  |  | 2020-01-01 | 2020-12-31 |  |  |  |  |  |  |  |  |  |  |  |  |  |  |  |  |
| A1790 |  | x | WBS summary | 262d | 2020-01-01 | 2020-12-31 |  |  |  |  |  | 0d | 131d |  | 16 | 80 | 5 | D | 5D |  |  |  |
| A1800 |  | x |  | 262d | 2020-01-01 | 2020-12-31 | A1080 |  |  |  |  | 0d |  |  | 52 | 81 | 5 | D | 5D | 5D1 | LOE | 0% |
|  | 21 | **03A101h, 03A101i** |  |  | 2019-10-08 | 2020-12-31 |  |  |  |  |  |  |  |  |  |  |  |  |  |  |  |  |
| A1810 |  | x | WBS summary | 437d | 2019-10-08 A | 2020-12-31 |  |  | 24d | 2019-05-01 | 2020-12-31 | 0d | 131d |  | 17 | 82 | 6 | D | 6D |  |  |  |
| A1860 |  | x |  | 1d | 2019-10-08 A | 2019-10-08 A | A1000 | 100% |  | 2019-05-01 | 2019-05-01 |  |  |  | 55 | 87 | 6 | D | 6D | 6D3 | 0/100 | 100% |
| A1820 |  | x |  | 1d | 2020-12-31 | 2020-12-31 | A1850 FF |  |  |  |  | 0d |  |  | 53 | 83 | 6 | D | 6D | 6D1 | 0/100 | 0% |
|  | 21.2 | **03A101h, 03A101i** |  |  | 2020-11-30 | 2020-12-31 |  |  |  |  |  |  |  |  |  |  |  |  |  |  |  |  |
| A1830 |  | x | WBS summary | 24d | 2020-11-30 | 2020-12-31 |  |  |  |  |  | 0d | 131d |  | 54 | 84 | 6 | D | 6D | 6D2 | 50/50 | 0% |
| A1840 |  | x |  | 1d | 2020-11-30 | 2020-11-30 | A1100 FS+5d |  |  |  |  | 12d |  | start on or after 2020-11-30 | 114 | 85 |  | D | 6D | 6D2 | 50/50 | 0% |
| A1850 |  | x |  | 1d | 2020-12-31 | 2020-12-31 | A1840 FS+10d |  |  |  |  | 0d |  | start on or after 2020-12-31 | 113 | 86 | 6 | A | 6D | 6D2 | 50/50 | 0% |
